# WBSTool Project

Schedule from ProjectLibre, 2019-01-01 to 2019-04-30.

## Calendars

- Standard: Mon-Fri 08:00-12:00, 13:00-17:00; Sat-Sun off.

## Resources

| Resource |
| --- |
| No Asignado |
| Programador Junior1 |
| Programador Junior2 |
| Analista-Diseñador |
| Analista-Programador |
| Programador Senior |
| Director de proyecto |
| Personal de empresa |

## Schedule

| ID | WBS | Task | Duration | Start | Finish | Predecessors | Total slack | Constraint | Resources |
| --- | --- | --- | --- | --- | --- | --- | --- | --- | --- |
| 1 | 1 | **Proyecto de sistema para bar tecnológico** | 85.88d? | 2019-01-01 09:00 | 2019-04-30 17:00 |  |  | start no earlier than 2019-01-01 08:00 |  |
| 2 | 1.1 | **Tareas de Gestión** | 85.88d? | 2019-01-01 09:00 | 2019-04-30 17:00 |  |  |  |  |
| 3 | 1.1.1 | **Tareas de riesgos** | 64.33d? | 2019-01-01 09:00 | 2019-04-01 11:40 |  | 2154.17d |  |  |
| 4 | 1.1.1.1 | Control de riesgos y daños 1 | 0.06d | 2019-02-01 09:00 | 2019-02-01 09:29 |  | 6281.3d | start no earlier than 2019-02-01 09:00 | Director de proyecto [50%]; Personal de empresa |
| 5 | 1.1.1.2 | Control de riesgos y daños 2 | 0.06d | 2019-03-01 09:00 | 2019-03-01 09:29 |  | 4281.3d | start no earlier than 2019-03-01 09:00 | Director de proyecto [50%]; Personal de empresa |
| 6 | 1.1.1.3 | Control de riesgos y daños 3 | 0.33d? | 2019-04-01 09:00 | 2019-04-01 11:40 |  | 2154.17d | start no earlier than 2019-04-01 09:00 | Director de proyecto [50%]; Personal de empresa |
| 7 | 1.1.1.4 | **Respuestas iniciales a riesgos** | 5d | 2019-01-01 09:00 | 2019-01-08 09:00 |  | 8087.5d |  |  |
| 8 | 1.1.1.4.1 | Crear Plan de incentivos | 1d | 2019-01-01 09:30 | 2019-01-02 09:30 | 14 | 712.92d | start no earlier than 2019-01-01 09:00 | Director de proyecto [50%] |
| 9 | 1.1.1.4.2 | Plan de comportamiento | 0.5d | 2019-01-02 09:30 | 2019-01-02 14:30 | 8 | 712.92d |  | Director de proyecto [50%] |
| 10 | 1.1.1.4.3 | Crear plan de errores y problemas | 0.25d | 2019-01-02 14:30 | 2019-01-02 16:30 | 9 | 712.92d |  | Director de proyecto [50%]; Analista-Programador [50%] |
| 11 | 1.1.1.4.4 | Formación de empleados | 5d | 2019-01-01 09:00 | 2019-01-08 09:00 |  | 8087.5d |  | Programador Junior1; Programador Senior |
| 12 | 1.1.2 | **Tareas de comunicación** | 85.06d | 2019-01-01 09:00 | 2019-04-30 09:29 |  | 81.3d |  |  |
| 13 | 1.1.2.1 | **Reuniones equipo** | 85.06d | 2019-01-01 09:00 | 2019-04-30 09:29 |  | 81.3d |  |  |
| 14 | 1.1.2.1.1 | Reunión equipo 1 | 0.06d | 2019-01-01 09:00 | 2019-01-01 09:30 |  | 712.92d |  | Programador Junior1; Programador Junior2; Analista-Diseñador; Analista-Programador; Programador Senior; Director de proyecto |
| 15 | 1.1.2.1.2 | Reunión equipo 2 | 0.06d | 2019-01-08 09:00 | 2019-01-08 09:29 |  | 8081.3d | start no earlier than 2019-01-08 09:00 | Programador Junior1; Programador Junior2; Analista-Diseñador; Analista-Programador; Programador Senior; Director de proyecto |
| 16 | 1.1.2.1.3 | Reunión equipo 3 | 0.06d | 2019-01-15 09:00 | 2019-01-15 09:29 |  | 7581.3d | start no earlier than 2019-01-15 09:00 | Programador Junior1; Programador Junior2; Analista-Diseñador; Analista-Programador; Programador Senior; Director de proyecto |
| 17 | 1.1.2.1.4 | Reunión equipo 4 | 0.06d | 2019-01-22 09:00 | 2019-01-22 09:29 |  | 7081.3d | start no earlier than 2019-01-22 09:00 | Programador Junior1; Programador Junior2; Analista-Diseñador; Analista-Programador; Programador Senior; Director de proyecto |
| 18 | 1.1.2.1.5 | Reunión equipo 5 | 0.06d | 2019-01-29 09:00 | 2019-01-29 09:29 |  | 6581.3d | start no earlier than 2019-01-29 09:00 | Programador Junior1; Programador Junior2; Analista-Diseñador; Analista-Programador; Programador Senior; Director de proyecto |
| 19 | 1.1.2.1.6 | Reunión equipo 6 | 0.06d | 2019-02-05 09:00 | 2019-02-05 09:29 |  | 6081.3d | start no earlier than 2019-02-05 09:00 | Programador Junior1; Programador Junior2; Analista-Diseñador; Analista-Programador; Programador Senior; Director de proyecto |
| 20 | 1.1.2.1.7 | Reunión equipo 7 | 0.06d | 2019-02-12 09:00 | 2019-02-12 09:29 |  | 5581.3d | start no earlier than 2019-02-12 09:00 | Programador Junior1; Programador Junior2; Analista-Diseñador; Analista-Programador; Programador Senior; Director de proyecto |
| 21 | 1.1.2.1.8 | Reunión equipo 8 | 0.06d | 2019-02-19 09:00 | 2019-02-19 09:29 |  | 5081.3d | start no earlier than 2019-02-19 09:00 | Programador Junior1; Programador Junior2; Analista-Diseñador; Analista-Programador; Programador Senior; Director de proyecto |
| 22 | 1.1.2.1.9 | Reunión equipo 9 | 0.06d | 2019-02-26 09:00 | 2019-02-26 09:29 |  | 4581.3d | start no earlier than 2019-02-26 09:00 | Programador Junior1; Programador Junior2; Analista-Diseñador; Analista-Programador; Programador Senior; Director de proyecto |
| 23 | 1.1.2.1.10 | Reunión equipo 10 | 0.06d | 2019-03-05 09:00 | 2019-03-05 09:29 |  | 4081.3d | start no earlier than 2019-03-05 09:00 | Programador Junior1; Programador Junior2; Analista-Diseñador; Analista-Programador; Programador Senior; Director de proyecto |
| 24 | 1.1.2.1.11 | Reunión equipo 11 | 0.06d | 2019-03-12 09:00 | 2019-03-12 09:29 |  | 3581.3d | start no earlier than 2019-03-12 09:00 | Programador Junior1; Programador Junior2; Analista-Diseñador; Analista-Programador; Programador Senior; Director de proyecto |
| 25 | 1.1.2.1.12 | Reunion equipo 12 | 0.06d | 2019-03-19 09:00 | 2019-03-19 09:29 |  | 3081.3d | start no earlier than 2019-03-19 09:00 | Programador Junior1; Programador Junior2; Analista-Diseñador; Analista-Programador; Programador Senior; Director de proyecto |
| 26 | 1.1.2.1.13 | Reunión equipo 13 | 0.06d | 2019-03-26 09:00 | 2019-03-26 09:29 |  | 2581.3d | start no earlier than 2019-03-26 09:00 | Programador Junior1; Programador Junior2; Analista-Diseñador; Analista-Programador; Programador Senior; Director de proyecto |
| 27 | 1.1.2.1.14 | Reunión equipo 14 | 0.06d | 2019-04-02 09:00 | 2019-04-02 09:29 |  | 2081.3d | start no earlier than 2019-04-02 09:00 | Programador Junior1; Programador Junior2; Analista-Diseñador; Analista-Programador; Programador Senior; Director de proyecto |
| 28 | 1.1.2.1.15 | Reunión equipo 15 | 0.06d | 2019-04-09 09:00 | 2019-04-09 09:29 |  | 1581.3d | start no earlier than 2019-04-09 09:00 | Programador Junior1; Programador Junior2; Analista-Diseñador; Analista-Programador; Programador Senior; Director de proyecto |
| 29 | 1.1.2.1.16 | Reunión equipo 16 | 0.06d | 2019-04-16 09:00 | 2019-04-16 09:29 |  | 1081.3d | start no earlier than 2019-04-16 09:00 | Programador Junior1; Programador Junior2; Analista-Diseñador; Analista-Programador; Programador Senior; Director de proyecto |
| 30 | 1.1.2.1.17 | Reunión de equipo 17 | 0.06d | 2019-04-23 09:00 | 2019-04-23 09:29 |  | 581.3d | start no earlier than 2019-04-23 09:00 | Programador Junior1; Programador Junior2; Analista-Diseñador; Analista-Programador; Programador Senior; Director de proyecto |
| 31 | 1.1.2.1.18 | Reunión de equipo 18 | 0.06d | 2019-04-30 09:00 | 2019-04-30 09:29 |  | 81.3d | start no earlier than 2019-04-30 09:00 | Programador Junior1; Programador Junior2; Analista-Diseñador; Analista-Programador; Programador Senior; Director de proyecto |

| ID | WBS | Task | Duration | Start | Finish | Total slack | Constraint | Resources |
| --- | --- | --- | --- | --- | --- | --- | --- | --- |
| 32 | 1.1.2.2 | **Reuniones clientes** | 64.06d | 2019-01-30 09:00 | 2019-04-30 09:29 | 81.3d |  |  |
| 33 | 1.1.2.2.1 | Reunión cliente 1 | 0.06d | 2019-01-30 09:00 | 2019-01-30 09:29 | 6481.3d | start no earlier than 2019-01-30 09:00 | Analista-Diseñador |
| 34 | 1.1.2.2.2 | Reunión cliente 2 | 0.06d | 2019-02-28 09:00 | 2019-02-28 09:29 | 4381.3d | start no earlier than 2019-02-28 09:00 | Analista-Diseñador |
| 35 | 1.1.2.2.3 | Reunión cliente 3 | 0.06d | 2019-03-30 09:00 | 2019-04-01 08:29 | 2193.8d | start no earlier than 2019-03-30 09:00 | Analista-Diseñador |
| 36 | 1.1.2.2.4 | Reunión cliente 4 | 0.06d | 2019-04-30 09:00 | 2019-04-30 09:29 | 81.3d | start no earlier than 2019-04-30 09:00 | Analista-Diseñador |
| 37 | 1.1.3 | **Tareas de gestión de Costes** | 75.88d? | 2019-01-15 09:00 | 2019-04-30 17:00 |  |  |  |
| 38 | 1.1.3.1 | Control de costes 1 | 0.88d? | 2019-01-15 09:00 | 2019-01-15 17:00 | 7500d | start no earlier than 2019-01-15 09:00 | Director de proyecto [50%] |
| 39 | 1.1.3.2 | Control de costes 2 | 0.88d? | 2019-01-30 09:00 | 2019-01-30 17:00 | 6400d | start no earlier than 2019-01-30 09:00 | Director de proyecto [50%] |
| 40 | 1.1.3.3 | Control de costes 3 | 0.88d? | 2019-02-15 09:00 | 2019-02-15 17:00 | 5200d | start no earlier than 2019-02-15 09:00 | Director de proyecto [50%] |
| 41 | 1.1.3.4 | Control de costes 4 | 0.88d | 2019-03-02 09:00 | 2019-03-04 16:00 | 4112.5d | start no earlier than 2019-03-02 09:00 | Director de proyecto [50%] |
| 42 | 1.1.3.5 | Control de costes 5 | 0.88d | 2019-03-16 09:00 | 2019-03-18 16:00 | 3112.5d | start no earlier than 2019-03-16 09:00 | Director de proyecto [50%] |
| 43 | 1.1.3.6 | Control de costes 6 | 0.88d | 2019-03-30 09:00 | 2019-04-01 16:00 | 2112.5d | start no earlier than 2019-03-30 09:00 | Director de proyecto [50%] |
| 44 | 1.1.3.7 | Control de costes 7 | 0.88d? | 2019-04-15 09:00 | 2019-04-15 17:00 | 1100d | start no earlier than 2019-04-15 09:00 | Director de proyecto [50%] |
| 45 | 1.1.3.8 | Control de costes 8 | 0.88d? | 2019-04-30 09:00 | 2019-04-30 17:00 |  | start no earlier than 2019-04-30 09:00 | Director de proyecto [50%] |
| 46 | 1.1.3.9 | Informe de costes 1 | 0.88d? | 2019-01-15 09:00 | 2019-01-15 17:00 | 7500d | start no earlier than 2019-01-15 09:00 | Director de proyecto [50%] |
| 47 | 1.1.3.10 | Informe de costes 2 | 0.88d? | 2019-01-30 09:00 | 2019-01-30 17:00 | 6400d | start no earlier than 2019-01-30 09:00 | Director de proyecto [50%] |
| 48 | 1.1.3.11 | Informe de costes 3 | 0.88d? | 2019-02-15 09:00 | 2019-02-15 17:00 | 5200d | start no earlier than 2019-02-15 09:00 | Director de proyecto [50%] |
| 49 | 1.1.3.12 | Informe de costes 4 | 0.88d | 2019-03-02 09:00 | 2019-03-04 16:00 | 4112.5d | start no earlier than 2019-03-02 09:00 | Director de proyecto [50%] |
| 50 | 1.1.3.13 | Informe de costes 5 | 0.88d? | 2019-03-15 09:00 | 2019-03-15 17:00 | 3200d | start no earlier than 2019-03-15 09:00 | Director de proyecto [50%] |
| 51 | 1.1.3.14 | Informe de costes 6 | 0.88d | 2019-03-30 09:00 | 2019-04-01 16:00 | 2112.5d | start no earlier than 2019-03-30 09:00 | Director de proyecto [50%] |
| 52 | 1.1.3.15 | Informe de costes 7 | 0.88d? | 2019-04-15 09:00 | 2019-04-15 17:00 | 1100d | start no earlier than 2019-04-15 09:00 | Director de proyecto [50%] |
| 53 | 1.1.3.16 | Informe de costes 8 | 0.88d? | 2019-04-30 09:00 | 2019-04-30 17:00 |  | start no earlier than 2019-04-30 09:00 | Director de proyecto [50%] |
| 54 | 1.1.4 | **Control de Comunicación** | 1d? | 2019-01-01 09:00 | 2019-01-02 09:00 | 8487.5d |  |  |
| 55 | 1.1.4.1 | Reuniones de resolución | 1d? | 2019-01-01 09:00 | 2019-01-02 09:00 | 8487.5d |  |  |
| 56 | 1.1.4.2 | Realización de informes | 1d? | 2019-01-01 09:00 | 2019-01-02 09:00 | 8487.5d |  |  |

| ID | WBS | Task | Duration | Start | Finish | Predecessors | Total slack | Constraint | Resources |
| --- | --- | --- | --- | --- | --- | --- | --- | --- | --- |
| 57 | 1.1 | **Análisis de requisitos del sistema** | 17.6d | 2019-01-02 16:30 | 2019-01-28 13:18 | 10 | 712.92d |  |  |
| 58 | 1.1.1 | **Identificación de las necesidades del cliente** | 4.1d | 2019-01-02 16:30 | 2019-01-09 08:18 |  | 712.92d |  |  |
| 59 | 1.1.1.1 | **Especificación informal del sistema** | 4.1d | 2019-01-02 16:30 | 2019-01-09 08:18 |  | 712.92d |  |  |
| 60 | 1.1.1.1.1 | **Técnica de obtención de requisitos** | 3d | 2019-01-02 16:30 | 2019-01-07 16:30 |  | 712.92d |  |  |
| 61 | 1.2.1.1.1.1 | Preparar preguntas y temáticas para entrevista inicial | 0.5d | 2019-01-02 16:30 | 2019-01-03 11:30 |  | 712.92d |  | Analista-Diseñador |
| 62 | 1.2.1.1.1.2 | Entrevistar jefe de proyecto | 0.5d | 2019-01-03 11:30 | 2019-01-03 16:30 | 61 | 712.92d |  | Analista-Diseñador; Director de proyecto |
| 63 | 1.2.1.1.1.3 | Cuestionar futuros empleados para conocer sus necesidades | 1d | 2019-01-03 16:30 | 2019-01-04 16:30 | 62 | 712.92d |  | Analista-Diseñador |
| 64 | 1.2.1.1.1.4 | Cuestionar posibles clientes para conocer sus preferencias | 1d | 2019-01-04 16:30 | 2019-01-07 16:30 | 63 | 712.92d |  | Analista-Diseñador |
| 65 | 1.1.1.2 | **Determinación informal de aspectos del sistema** | 1.1d | 2019-01-07 16:30 | 2019-01-09 08:18 | 60 | 712.92d |  |  |
| 66 | 1.2.1.1.2.1 | Determinar necesidades de jefe de proyectos | 0.5d | 2019-01-07 16:30 | 2019-01-08 11:30 |  | 712.92d |  | Analista-Diseñador; Director de proyecto |
| 67 | 1.1.1.2.1 | **Determinación informal de funciones** | 0.6d | 2019-01-08 11:30 | 2019-01-09 08:18 | 66 | 712.92d |  |  |
| 68 | 1.2.1.1.2.2.1 | Cuestionar futuros empleados para conocer sus necesidades | 0.1d | 2019-01-08 11:30 | 2019-01-08 13:18 |  | 712.92d |  | Analista-Diseñador |
| 69 | 1.2.1.1.2.2.2 | Cuestionar posibles clientes para conocer sus preferencias | 0.1d | 2019-01-08 16:30 | 2019-01-09 08:18 | 80 | 712.92d | start no earlier than 2019-01-04 11:12 | Analista-Diseñador |
| 70 | 1.1.1.2.2 | **Determinación informal de información manejada** | 0.2d | 2019-01-08 11:30 | 2019-01-08 14:06 | 66 | 722.92d |  |  |
| 71 | 1.2.1.1.2.3.1 | Cuestionar futuros empleados para conocer sus necesidades | 0.1d | 2019-01-08 13:18 | 2019-01-08 14:06 | 68 | 712.92d |  | Analista-Diseñador |
| 72 | 1.2.1.1.2.3.2 | Cuestionar posibles clientes para conocer sus preferencias | 0.1d | 2019-01-08 11:30 | 2019-01-08 13:18 | 69 | 732.92d |  | Analista-Diseñador |
| 73 | 1.1.1.2.3 | **Determinación informal de interfaces del sistema** | 0.2d | 2019-01-08 13:18 | 2019-01-08 14:54 | 66 | 722.92d |  |  |
| 74 | 1.2.1.1.2.4.1 | Cuestionar futuros empleados para conocer sus necesidades | 0.1d | 2019-01-08 14:06 | 2019-01-08 14:54 | 71 | 712.92d |  | Analista-Diseñador |
| 75 | 1.2.1.1.2.4.2 | Cuestionar posibles clientes para conocer sus preferencias | 0.1d | 2019-01-08 13:18 | 2019-01-08 14:06 | 72 | 732.92d |  | Analista-Diseñador |
| 76 | 1.1.1.2.4 | **Determinación informal de rendimiento del sistema** | 0.2d | 2019-01-08 14:06 | 2019-01-08 15:42 | 66 | 722.92d |  |  |
| 77 | 1.2.1.1.2.5.1 | Cuestionar futuros empleados para conocer sus necesidades | 0.1d | 2019-01-08 14:54 | 2019-01-08 15:42 | 74 | 712.92d |  | Analista-Diseñador |
| 78 | 1.2.1.1.2.5.2 | Cuestionar posibles clientes para conocer sus preferencias | 0.1d | 2019-01-08 14:06 | 2019-01-08 14:54 | 75 | 732.92d |  | Analista-Diseñador |
| 79 | 1.1.1.2.5 | **Determinación informal de las restricciones del sistema** | 0.2d | 2019-01-08 14:54 | 2019-01-08 16:30 | 66 | 722.92d |  |  |
| 80 | 1.2.1.1.2.6.1 | Cuestionar futuros empleados para conocer sus necesidades | 0.1d | 2019-01-08 15:42 | 2019-01-08 16:30 | 77 | 712.92d |  | Analista-Diseñador |
| 81 | 1.2.1.1.2.6.2 | Cuestionar posibles clientes para conocer sus preferencias | 0.1d | 2019-01-08 14:54 | 2019-01-08 15:42 | 78 | 732.92d |  | Analista-Diseñador |

| ID | WBS | Task | Duration | Start | Finish | Predecessors | Total slack | Resources |
| --- | --- | --- | --- | --- | --- | --- | --- | --- |
| 82 | 1.1.2 | **Asignación de funciones a cada elemento del sistema** | 5d | 2019-01-09 08:18 | 2019-01-16 08:18 | 58 | 712.92d |  |
| 83 | 1.1.2.1 | **Alternativas de creación del sistema** | 2.5d | 2019-01-09 08:18 | 2019-01-11 13:18 |  | 712.92d |  |
| 84 | 1.2.2.1.1 | Buscar tecnologías y metodologías alternativas | 2.5d | 2019-01-09 08:18 | 2019-01-11 13:18 |  | 712.92d | Analista-Diseñador |
| 85 | 1.2.2.2 | Informar del progreso de la semana al Jefe de proyecto | 0.12d | 2019-01-11 13:18 | 2019-01-11 14:18 | 83 | 712.92d | Analista-Diseñador; Director de proyecto |
| 86 | 1.1.2.2 | **Validación de las alternativas de creación del sistema** | 2.38d | 2019-01-11 14:18 | 2019-01-16 08:18 | 85 | 712.92d |  |
| 87 | 1.2.2.3.1 | Analizar las alternativas obtenidas | 1d | 2019-01-11 14:18 | 2019-01-14 14:18 |  | 712.92d | Analista-Diseñador |
| 88 | 1.2.2.3.2 | Comparar las alternativas con la propuesta original | 1d | 2019-01-14 14:18 | 2019-01-15 14:18 | 87 | 712.92d | Analista-Diseñador |
| 89 | 1.2.2.3.3 | Decidir finalmente que tecnología usar | 0.25d | 2019-01-15 14:18 | 2019-01-15 16:18 | 88 | 712.92d | Analista-Diseñador |
| 90 | 1.2.2.3.4 | Informar al Jefe del progreso de la semana | 0.12d | 2019-01-15 16:18 | 2019-01-16 08:18 | 89 | 712.92d | Analista-Diseñador; Director de proyecto |
| 91 | 1.1.3 | **Evaluación de la viabilidad del sistema** | 7.5d | 2019-01-16 08:18 | 2019-01-25 13:18 | 82 | 712.92d |  |
| 92 | 1.1.3.1 | **Estudio de viabilidad económico** | 2.5d | 2019-01-16 08:18 | 2019-01-18 13:18 |  | 712.92d |  |
| 93 | 1.2.3.1.1 | Realizar análisis de costes económicos | 0.62d | 2019-01-16 08:18 | 2019-01-16 14:18 |  | 712.92d | Analista-Diseñador |
| 94 | 1.2.3.1.2 | Realizar análisis de mercado | 0.62d | 2019-01-16 14:18 | 2019-01-17 10:18 | 93 | 712.92d | Analista-Diseñador |
| 95 | 1.2.3.1.3 | Realizar estimaciones coste-beneficio y tiempo-beneficio | 0.62d | 2019-01-17 10:18 | 2019-01-17 16:18 | 94 | 712.92d | Analista-Diseñador |
| 96 | 1.2.3.1.4 | Reunirse con el jefe para decidir su el proyecto se considera viable | 0.62d | 2019-01-17 16:18 | 2019-01-18 13:18 | 95 | 712.92d | Analista-Diseñador |
| 97 | 1.1.3.2 | **Estudio de viabilidad técnico** | 1.75d | 2019-01-18 13:18 | 2019-01-22 10:18 | 92 | 712.92d |  |
| 98 | 1.2.3.2.1 | Estudiar las tecnologías disponibles para el proyecto | 0.62d | 2019-01-18 13:18 | 2019-01-21 09:18 |  | 712.92d | Analista-Programador |
| 99 | 1.2.3.2.2 | Analizar recursos y tecnologías a las que tiene acceso la empresa | 0.25d | 2019-01-21 09:18 | 2019-01-21 11:18 | 98 | 712.92d | Analista-Programador |
| 100 | 1.2.3.2.3 | Analizar recursos y tecnologías de terceros que podrían comprarse o contratarse | 0.25d | 2019-01-21 11:18 | 2019-01-21 14:18 | 99 | 712.92d | Analista-Programador |
| 101 | 1.2.3.2.4 | Analizar con la información obtenida si el proyecto es viable | 0.62d | 2019-01-21 14:18 | 2019-01-22 10:18 | 100 | 712.92d | Analista-Programador |
| 102 | 1.1.3.3 | **Estudio de viabilidad legal** | 2d | 2019-01-22 10:18 | 2019-01-24 10:18 | 97 | 712.92d |  |
| 103 | 1.2.3.3.1 | Estudiar las leyes relacionadas con la parte tecnológica del proyecto | 0.5d | 2019-01-22 10:18 | 2019-01-22 15:18 |  | 712.92d | Director de proyecto |
| 104 | 1.2.3.3.2 | Estudiar las leyes relacionadas con al parte de hostelería del proyecto | 0.5d | 2019-01-22 15:18 | 2019-01-23 10:18 | 103 | 712.92d | Director de proyecto |
| 105 | 1.2.3.3.3 | Estudiar las leyes relacionadas con salud e higiene de local | 0.5d | 2019-01-23 10:18 | 2019-01-23 15:18 | 104 | 712.92d | Director de proyecto |
| 106 | 1.2.3.3.4 | Realizar un informe sobre los estudios legales | 0.38d | 2019-01-23 15:18 | 2019-01-24 09:18 | 105 | 712.92d | Director de proyecto |
| 107 | 1.2.3.3.5 | Analizar con la información obtenida si el proyecto es legalmente viable | 0.12d | 2019-01-24 09:18 | 2019-01-24 10:18 | 106 | 712.92d | Director de proyecto |

| ID | WBS | Task | Duration | Start | Finish | Predecessors | Total slack | Resources |
| --- | --- | --- | --- | --- | --- | --- | --- | --- |
| 108 | 1.1.3.4 | **Estudio de viabilidad de plazos** | 1.25d | 2019-01-24 10:18 | 2019-01-25 13:18 | 102 | 712.92d |  |
| 109 | 1.2.3.4.1 | Realizar análisis de costes temporales | 1d | 2019-01-24 10:18 | 2019-01-25 10:18 |  | 712.92d | Analista-Diseñador |
| 110 | 1.2.3.4.2 | Realizar planificación de distribución de trabajo | 0.25d | 2019-01-24 10:18 | 2019-01-24 13:18 |  | 787.92d | Analista-Diseñador |
| 111 | 1.2.3.4.3 | Determinar si el proyecto es viable en el tiempo elegido | 0.25d | 2019-01-25 10:18 | 2019-01-25 13:18 | 110, 109 | 712.92d | Analista-Diseñador |
| 112 | 1.1.4 | **Obtención de una definición del sistema** | 1d | 2019-01-25 13:18 | 2019-01-28 13:18 | 91 | 712.92d |  |
| 113 | 1.1.4.1 | **Especificación formal del sistema** | 0.4d | 2019-01-25 13:18 | 2019-01-25 16:30 |  | 712.92d |  |
| 114 | 1.1.4.1.1 | **Diagrama de contexto** | 0.2d | 2019-01-25 13:18 | 2019-01-25 14:54 |  | 712.92d |  |
| 115 | 1.2.4.1.1.1 | Dibujar el diagrama de contexto | 0.2d | 2019-01-25 13:18 | 2019-01-25 14:54 |  | 712.92d | Analista-Programador |
| 116 | 1.1.4.1.2 | **Diagrama de sistema** | 0.2d | 2019-01-25 14:54 | 2019-01-25 16:30 | 114 | 712.92d |  |
| 117 | 1.2.4.1.2.1 | Dibujar el diagrama de sistema | 0.2d | 2019-01-25 14:54 | 2019-01-25 16:30 |  | 712.92d | Analista-Programador |
| 118 | 1.1.4.2 | **Representación del sistema** | 0.6d | 2019-01-25 16:30 | 2019-01-28 13:18 | 113 | 712.92d |  |
| 119 | 1.1.4.2.1 | **Diagramas de flujo de datos** | 0.2d | 2019-01-25 16:30 | 2019-01-28 09:06 |  | 712.92d |  |
| 120 | 1.2.4.2.1.1 | Dibujar el diagrama de sistema | 0.2d | 2019-01-25 16:30 | 2019-01-28 09:06 |  | 712.92d | Analista-Diseñador |
| 121 | 1.1.4.2.2 | **Diagramas de flujo de control** | 0.2d | 2019-01-28 09:06 | 2019-01-28 10:42 | 119 | 712.92d |  |
| 122 | 1.2.4.2.2.1 | Dibujar el diagrama de sistema | 0.2d | 2019-01-28 09:06 | 2019-01-28 10:42 |  | 712.92d | Analista-Diseñador |
| 123 | 1.1.4.2.3 | **Diagramas del ámbito de la información** | 0.2d | 2019-01-28 10:42 | 2019-01-28 13:18 | 121 | 712.92d |  |
| 124 | 1.2.4.2.3.1 | Dibujar el diagrama de sistema | 0.2d | 2019-01-28 10:42 | 2019-01-28 13:18 |  | 712.92d | Analista-Diseñador |
| 125 | 1.2 | **Análisis de requisitos del software** | 2.62d | 2019-01-28 13:18 | 2019-01-31 09:18 | 57 | 712.92d |  |
| 126 | 1.2.1 | **Extracción o determinación de requisitos** | 0.38d | 2019-01-28 13:18 | 2019-01-28 16:18 |  | 712.92d |  |
| 127 | 1.2.1.1 | **Documentos de reuniones con cliente** | 0.12d | 2019-01-28 13:18 | 2019-01-28 14:18 |  | 712.92d |  |
| 128 | 1.3.1.1.1 | Realizar un acta de reunión para la reunión con el cliente | 0.12d | 2019-01-28 13:18 | 2019-01-28 14:18 |  | 712.92d | Analista-Diseñador |
| 129 | 1.3.1.1.2 | Realizar un informe sobre las solicitudes e información que se obtuvo del cliente | 0.12d | 2019-01-28 13:18 | 2019-01-28 14:18 |  | 712.92d | Analista-Diseñador; Analista-Programador |
| 130 | 1.2.1.2 | **Especificación informal de requisitos software** | 0.25d | 2019-01-28 14:18 | 2019-01-28 16:18 | 127 | 712.92d |  |
| 131 | 1.3.1.2.1 | Redactar un primer informe de los requisitos del software a partir del informe de reunión con el cliente | 0.25d | 2019-01-28 14:18 | 2019-01-28 16:18 |  | 712.92d | Analista-Diseñador; Analista-Programador |

| ID | WBS | Task | Duration | Start | Finish | Predecessors | Total slack | Resources |
| --- | --- | --- | --- | --- | --- | --- | --- | --- |
| 132 | 1.2.2 | **Análisis de requisitos** | 0.75d | 2019-01-28 16:18 | 2019-01-29 14:18 | 126 | 712.92d |  |
| 133 | 1.2.2.1 | **Validación de especificación informal** | 0.12d | 2019-01-28 16:18 | 2019-01-29 08:18 |  | 712.92d |  |
| 134 | 1.3.2.1.1 | Analizar especificación informal para posibles mejoras | 0.12d | 2019-01-28 16:18 | 2019-01-29 08:18 |  | 712.92d | Analista-Diseñador |
| 135 | 1.3.2.1.2 | Buscar errores en la especificación informal | 0.12d | 2019-01-28 16:18 | 2019-01-29 08:18 |  | 712.92d | Analista-Programador |
| 136 | 1.2.2.2 | **Resolución de inconsistencias** | 0.25d | 2019-01-29 08:18 | 2019-01-29 10:18 | 133 | 712.92d |  |
| 137 | 1.3.2.2.1 | Corregir errores en la especificación informal | 0.25d | 2019-01-29 08:18 | 2019-01-29 10:18 |  | 712.92d | Analista-Programador |
| 138 | 1.3.2.2.2 | Encontrar redundancias y discrepancias en la especificación informal | 0.25d | 2019-01-29 08:18 | 2019-01-29 10:18 |  | 712.92d | Analista-Diseñador |
| 139 | 1.2.2.3 | **Coordinación de requisitos relacionados** | 0.38d | 2019-01-29 10:18 | 2019-01-29 14:18 | 136 | 712.92d |  |
| 140 | 1.3.2.3.1 | Formar relaciones entre requisitos que tengan puntos comunes | 0.25d | 2019-01-29 10:18 | 2019-01-29 13:18 |  | 712.92d | Analista-Diseñador; Analista-Programador |
| 141 | 1.3.2.3.2 | Purgar relaciones redundantes | 0.12d | 2019-01-29 13:18 | 2019-01-29 14:18 | 140 | 712.92d | Analista-Diseñador; Analista-Programador |
| 142 | 1.2.3 | **Especificación de requisitos** | 0.75d | 2019-01-29 14:18 | 2019-01-30 11:18 | 132 | 712.92d |  |
| 143 | 1.2.3.1 | **Documento de especificación formal de requisitos** | 0.5d | 2019-01-29 14:18 | 2019-01-30 09:18 |  | 712.92d |  |
| 144 | 1.3.3.1.1 | Redactar documento de requisitos formal | 0.5d | 2019-01-29 14:18 | 2019-01-30 09:18 |  | 712.92d | Analista-Programador |
| 145 | 1.2.3.2 | **Revisión de documento de especificación formal** | 0.25d | 2019-01-30 09:18 | 2019-01-30 11:18 | 143 | 712.92d |  |
| 146 | 1.3.3.2.1 | Revisar documento de requisitos formal en busca de errores | 0.12d | 2019-01-30 09:18 | 2019-01-30 10:18 |  | 712.92d | Analista-Diseñador |
| 147 | 1.3.3.2.2 | Revisar documento de requisitos formal en busca de mejoras de formato y claridad | 0.12d | 2019-01-30 10:18 | 2019-01-30 11:18 | 146 | 712.92d | Analista-Diseñador |
| 148 | 1.2.4 | **Validación de requisitos** | 0.75d | 2019-01-30 11:18 | 2019-01-31 09:18 | 142 | 712.92d |  |
| 149 | 1.2.4.1 | **Reunión con cliente para validación de requisitos** | 0.25d | 2019-01-30 11:18 | 2019-01-30 14:18 |  | 712.92d |  |
| 150 | 1.3.4.1.1 | Redactar acta de reunión con el cliente y validar requisitos | 0.25d | 2019-01-30 11:18 | 2019-01-30 14:18 |  | 712.92d | Analista-Diseñador |
| 151 | 1.2.4.2 | **Corrección de especificación formal** | 0.25d | 2019-01-30 14:18 | 2019-01-30 16:18 | 149 | 712.92d |  |
| 152 | 1.3.4.2.1 | Ajustar los requisitos a partir de la validación realizada | 0.25d | 2019-01-30 14:18 | 2019-01-30 16:18 |  | 712.92d | Analista-Programador |
| 153 | 1.2.4.3 | **Validación de la especificación forma corregidsa** | 0.25d | 2019-01-30 16:18 | 2019-01-31 09:18 | 151 | 712.92d |  |
| 154 | 1.3.4.3.1 | Reunirse con el cliente para realizar la validación final de requisitos | 0.25d | 2019-01-30 16:18 | 2019-01-31 09:18 |  | 712.92d | Analista-Diseñador; Analista-Programador |
| 155 | 1.3 | **Diseño del sistema software** | 24.75d | 2019-01-31 09:18 | 2019-03-06 16:18 | 125 | 712.92d |  |
| 156 | 1.3.1 | **Diseño funcional** | 6d | 2019-01-31 09:18 | 2019-02-08 09:18 |  | 712.92d |  |
| 157 | 1.3.1.1 | **Diseño módulo del camarero** | 1d | 2019-01-31 09:18 | 2019-02-01 09:18 |  | 712.92d |  |
| 158 | 1.4.1.1.1 | Realizar diseño del módulo | 1d | 2019-01-31 09:18 | 2019-02-01 09:18 |  | 712.92d | Analista-Diseñador; Analista-Programador |

| ID | WBS | Task | Duration | Start | Finish | Predecessors | Total slack | Resources |
| --- | --- | --- | --- | --- | --- | --- | --- | --- |
| 159 | 1.3.1.2 | **Diseño módulo de gestión de proveedores** | 1d | 2019-02-01 09:18 | 2019-02-04 09:18 | 157 | 712.92d |  |
| 160 | 1.4.1.2.1 | Realizar diseño del módulo | 1d | 2019-02-01 09:18 | 2019-02-04 09:18 |  | 712.92d | Analista-Diseñador; Analista-Programador |
| 161 | 1.3.1.3 | **Diseño módulo de cocinas/barras** | 1d | 2019-02-04 09:18 | 2019-02-05 09:18 | 159 | 712.92d |  |
| 162 | 1.4.1.3.1 | Realizar diseño del módulo | 1d | 2019-02-04 09:18 | 2019-02-05 09:18 |  | 712.92d | Analista-Diseñador; Analista-Programador |
| 163 | 1.3.1.4 | **Diseño módulo para muestra de datos y comandas** | 1d | 2019-02-05 09:18 | 2019-02-06 09:18 | 161 | 712.92d |  |
| 164 | 1.4.1.4.1 | Realizar diseño del módulo | 1d | 2019-02-05 09:18 | 2019-02-06 09:18 |  | 712.92d | Analista-Diseñador; Analista-Programador |
| 165 | 1.3.1.5 | **Diseño módulo de entretenimiento** | 1d | 2019-02-06 09:18 | 2019-02-07 09:18 | 163 | 712.92d |  |
| 166 | 1.4.1.5.1 | Realizar diseño del módulo | 1d | 2019-02-06 09:18 | 2019-02-07 09:18 |  | 712.92d | Analista-Diseñador; Analista-Programador |
| 167 | 1.3.1.6 | **Diseño módulo de monitorización general del sistema** | 1d | 2019-02-07 09:18 | 2019-02-08 09:18 | 165 | 712.92d |  |
| 168 | 1.4.1.6.1 | Realizar diseño del módulo | 1d | 2019-02-07 09:18 | 2019-02-08 09:18 |  | 712.92d | Analista-Diseñador; Analista-Programador |
| 169 | 1.3.2 | **Diseño técnico** | 8.25d | 2019-02-08 09:18 | 2019-02-20 11:18 | 156 | 712.92d |  |
| 170 | 1.3.2.1 | **Selección de tecnologías** | 4.25d | 2019-02-08 09:18 | 2019-02-14 11:18 |  | 712.92d |  |
| 171 | 1.3.2.1.1 | **Base de datos a usar** | 1.5d | 2019-02-08 09:18 | 2019-02-11 14:18 |  | 712.92d |  |
| 172 | 1.4.2.1.1.1 | Comparar bases de datos disponibles | 1d | 2019-02-08 09:18 | 2019-02-11 09:18 |  | 712.92d | Analista-Programador |
| 173 | 1.4.2.1.1.2 | Elegir la opción que mejor se adapte al proyecto | 0.5d | 2019-02-11 09:18 | 2019-02-11 14:18 | 172 | 712.92d | Analista-Programador |
| 174 | 1.3.2.1.2 | **Sistema operativo y aplicaciones de las tablets** | 1.5d | 2019-02-11 14:18 | 2019-02-13 09:18 | 171 | 712.92d |  |
| 175 | 1.4.2.1.2.1 | Comparar los sistemas operativos disponibles | 1d | 2019-02-11 14:18 | 2019-02-12 14:18 |  | 712.92d | Analista-Programador |
| 176 | 1.4.2.1.2.2 | Elegir la opción que mejor se adapte al proyecto | 0.5d | 2019-02-12 14:18 | 2019-02-13 09:18 | 175 | 712.92d | Analista-Programador |
| 177 | 1.3.2.1.3 | **Lenguaje de programación y consultas SQL** | 1.25d | 2019-02-13 09:18 | 2019-02-14 11:18 | 174 | 712.92d |  |
| 178 | 1.4.2.1.3.1 | Analizar que lenguaje de programación y consultas SQL se adapta mejor a nuestra BD elegida | 1.25d | 2019-02-13 09:18 | 2019-02-14 11:18 |  | 712.92d | Analista-Programador; Programador Junior1 |
| 179 | 1.4.2.1.3.2 | Analizar que lenguaje se adapta mejor a las necesidades de la empresa | 1.25d | 2019-02-13 09:18 | 2019-02-14 11:18 |  | 712.92d | Analista-Programador; Programador Junior1 |
| 180 | 1.3.2.1.4 | **Interfaces de comunicación e interoperación con otras aplicaciones** | 1d | 2019-02-08 09:18 | 2019-02-11 09:18 |  | 1037.92d |  |
| 181 | 1.4.2.1.4.1 | Diseñar mediante diagramas y diseño informal las interfaces | 1d | 2019-02-08 09:18 | 2019-02-11 09:18 |  | 1037.92d | Analista-Diseñador |
| 182 | 1.3.2.2 | **Validación de tecnologías** | 4d | 2019-02-14 11:18 | 2019-02-20 11:18 | 170 | 712.92d |  |
| 183 | 1.3.2.2.1 | **Diseño de pruebas de rendimiento de las tecnologías** | 2d | 2019-02-14 11:18 | 2019-02-18 11:18 |  | 712.92d |  |
| 184 | 1.4.2.2.1.1 | Diseñar las pruebas de rendimiento | 2d | 2019-02-14 11:18 | 2019-02-18 11:18 |  | 712.92d | Analista-Diseñador |

| ID | WBS | Task | Duration | Start | Finish | Predecessors | Total slack | Resources |
| --- | --- | --- | --- | --- | --- | --- | --- | --- |
| 185 | 1.3.2.2.2 | **Diseño de pruebas de coste de las tecnologías** | 2d | 2019-02-18 11:18 | 2019-02-20 11:18 | 183 | 712.92d |  |
| 186 | 1.4.2.2.2.1 | Diseñar las pruebas de coste | 2d | 2019-02-18 11:18 | 2019-02-20 11:18 |  | 712.92d | Analista-Diseñador |
| 187 | 1.3.3 | **Diseño de pruebas** | 7.5d | 2019-02-20 11:18 | 2019-03-01 16:18 | 169 | 712.92d |  |
| 188 | 1.3.3.1 | **Diseño de pruebas de aceptación** | 3d | 2019-02-20 11:18 | 2019-02-25 11:18 |  | 1012.92d |  |
| 189 | 1.3.3.1.1 | **Diseño de pruebas para los gerentes del local** | 1.5d | 2019-02-20 11:18 | 2019-02-21 16:18 |  | 1012.92d |  |
| 190 | 1.4.3.1.1.1 | Redactar informe de los minimos que deben cubrir las pruebas | 0.5d | 2019-02-20 11:18 | 2019-02-20 16:18 |  | 1012.92d | Analista-Diseñador |
| 191 | 1.4.3.1.1.2 | Diseñar las pruebas basandose en los informes | 1d | 2019-02-20 16:18 | 2019-02-21 16:18 | 190 | 1012.92d | Analista-Diseñador |
| 192 | 1.3.3.1.2 | **Diseño de pruebas sobre el personal del local** | 1.5d | 2019-02-20 11:18 | 2019-02-21 16:18 |  | 712.92d |  |
| 193 | 1.4.3.1.2.1 | Redactar informe de los minimos que deben cubrir las pruebas | 0.5d | 2019-02-20 11:18 | 2019-02-20 16:18 |  | 712.92d | Analista-Programador |
| 194 | 1.4.3.1.2.2 | Diseñar las pruebas basandose en los informes | 1d | 2019-02-20 16:18 | 2019-02-21 16:18 | 193 | 712.92d | Analista-Programador |
| 195 | 1.3.3.1.3 | **Diseño de pruebas sobre los usuarios del local** | 1.5d | 2019-02-20 11:18 | 2019-02-21 16:18 |  | 1162.92d |  |
| 196 | 1.4.3.1.3.1 | Redactar informe de los minimos que deben cubrir las pruebas | 0.5d | 2019-02-20 11:18 | 2019-02-20 16:18 |  | 1162.92d | Programador Junior1; Programador Junior2 |
| 197 | 1.4.3.1.3.2 | Diseñar las pruebas basandose en los informes | 1d | 2019-02-20 16:18 | 2019-02-21 16:18 | 196 | 1162.92d | Programador Junior1; Programador Junior2 |
| 198 | 1.3.3.1.4 | **Diseño de pruebas para los proveedores** | 1.5d | 2019-02-21 16:18 | 2019-02-25 11:18 | 189 | 1012.92d |  |
| 199 | 1.4.3.1.4.1 | Redactar informe de los minimos que deben cubrir las pruebas | 0.5d | 2019-02-21 16:18 | 2019-02-22 11:18 |  | 1012.92d | Analista-Diseñador |
| 200 | 1.4.3.1.4.2 | Diseñar las pruebas basandose en los informes | 1d | 2019-02-22 11:18 | 2019-02-25 11:18 | 199 | 1012.92d | Analista-Diseñador |
| 201 | 1.3.3.2 | **Diseño de pruebas del sistema** | 3d | 2019-02-21 16:18 | 2019-02-26 16:18 |  | 1012.92d |  |
| 202 | 1.3.3.2.1 | **Diseño de pruebas para comunicación con PayPal** | 1.5d | 2019-02-21 16:18 | 2019-02-25 11:18 | 192 | 712.92d |  |
| 203 | 1.4.3.2.1.1 | Redactar informe de los minimos que deben cubrir las pruebas | 0.5d | 2019-02-21 16:18 | 2019-02-22 11:18 |  | 712.92d | Analista-Programador |
| 204 | 1.4.3.2.1.2 | Diseñar las pruebas basandose en los informes | 1d | 2019-02-22 11:18 | 2019-02-25 11:18 | 203 | 712.92d | Analista-Programador |
| 205 | 1.3.3.2.2 | **Diseño de pruebas para comunicación con terminales TPV** | 1.5d | 2019-02-21 16:18 | 2019-02-25 11:18 | 195 | 1162.92d |  |
| 206 | 1.4.3.2.2.1 | Redactar informe de los minimos que deben cubrir las pruebas | 0.5d | 2019-02-21 16:18 | 2019-02-22 11:18 |  | 1162.92d | Programador Junior1; Programador Junior2 |
| 207 | 1.4.3.2.2.2 | Diseñar las pruebas basandose en los informes | 1d | 2019-02-22 11:18 | 2019-02-25 11:18 | 206 | 1162.92d | Programador Junior1; Programador Junior2 |
| 208 | 1.3.3.2.3 | **Diseño de pruebas para comunicación con tablets del local** | 1.5d | 2019-02-25 11:18 | 2019-02-26 16:18 | 198 | 1012.92d |  |
| 209 | 1.4.3.2.3.1 | Redactar informe de los minimos que deben cubrir las pruebas | 0.5d | 2019-02-25 11:18 | 2019-02-25 16:18 |  | 1012.92d | Analista-Diseñador |
| 210 | 1.4.3.2.3.2 | Diseñar las pruebas basandose en los informes | 1d | 2019-02-25 16:18 | 2019-02-26 16:18 | 209 | 1012.92d | Analista-Diseñador |

| ID | WBS | Task | Duration | Start | Finish | Predecessors | Total slack | Resources |
| --- | --- | --- | --- | --- | --- | --- | --- | --- |
| 211 | 1.3.3.3 | **Diseño de pruebas de integración** | 1.5d | 2019-02-25 11:18 | 2019-02-26 16:18 |  | 712.92d |  |
| 212 | 1.3.3.3.1 | **Diseño de pruebas para comunicación entre módulos** | 1.5d | 2019-02-25 11:18 | 2019-02-26 16:18 | 202 | 712.92d |  |
| 213 | 1.4.3.3.1.1 | Redactar informe de los minimos que deben cubrir las pruebas | 0.5d | 2019-02-25 11:18 | 2019-02-25 16:18 |  | 712.92d | Analista-Programador |
| 214 | 1.4.3.3.1.2 | Diseñar las pruebas basandose en los informes | 1d | 2019-02-25 16:18 | 2019-02-26 16:18 | 213 | 712.92d | Analista-Programador |
| 215 | 1.3.3.4 | **Diseño de pruebas de unidad** | 3d | 2019-02-26 16:18 | 2019-03-01 16:18 | 211 | 712.92d |  |
| 216 | 1.3.3.4.1 | **Diseño de pruebas de módulo de monitorización general del sistema** | 1.5d | 2019-02-26 16:18 | 2019-02-28 11:18 |  | 712.92d |  |
| 217 | 1.4.3.4.1.1 | Redactar informe de los minimos que deben cubrir las pruebas | 0.5d | 2019-02-26 16:18 | 2019-02-27 11:18 |  | 712.92d | Analista-Diseñador |
| 218 | 1.4.3.4.1.2 | Diseñar las pruebas basandose en los informes | 1d | 2019-02-27 11:18 | 2019-02-28 11:18 | 217 | 712.92d | Analista-Diseñador |
| 219 | 1.3.3.4.2 | **Diseño de pruebas de módulo de entretenimiento** | 1.5d | 2019-02-28 11:18 | 2019-03-01 16:18 | 216 | 712.92d |  |
| 220 | 1.4.3.4.2.1 | Redactar informe de los minimos que deben cubrir las pruebas | 0.5d | 2019-02-28 11:18 | 2019-02-28 16:18 |  | 712.92d | Analista-Diseñador |
| 221 | 1.4.3.4.2.2 | Diseñar las pruebas basandose en los informes | 1d | 2019-02-28 16:18 | 2019-03-01 16:18 | 220 | 712.92d | Analista-Diseñador |
| 222 | 1.3.3.4.3 | **Diseño de pruebas de módulo para muestra de datos y comandas** | 1.5d | 2019-02-26 16:18 | 2019-02-28 11:18 |  | 712.92d |  |
| 223 | 1.4.3.4.3.1 | Redactar informe de los minimos que deben cubrir las pruebas | 0.5d | 2019-02-26 16:18 | 2019-02-27 11:18 |  | 712.92d | Analista-Programador |
| 224 | 1.4.3.4.3.2 | Diseñar las pruebas basandose en los informes | 1d | 2019-02-27 11:18 | 2019-02-28 11:18 | 223 | 712.92d | Analista-Programador |
| 225 | 1.3.3.4.4 | **Diseño de pruebas de módulo de gestión de proveedores** | 1.5d | 2019-02-28 11:18 | 2019-03-01 16:18 | 222 | 712.92d |  |
| 226 | 1.4.3.4.4.1 | Redactar informe de los minimos que deben cubrir las pruebas | 0.5d | 2019-02-28 11:18 | 2019-02-28 16:18 |  | 712.92d | Analista-Programador |
| 227 | 1.4.3.4.4.2 | Diseñar las pruebas basandose en los informes | 1d | 2019-02-28 16:18 | 2019-03-01 16:18 | 226 | 712.92d | Analista-Programador |
| 228 | 1.3.3.4.5 | **Diseño de pruebas de módulo del camarero** | 1.5d | 2019-02-26 16:18 | 2019-02-28 11:18 |  | 712.92d |  |
| 229 | 1.4.3.4.5.1 | Redactar informe de los minimos que deben cubrir las pruebas | 0.5d | 2019-02-26 16:18 | 2019-02-27 11:18 |  | 712.92d | Programador Junior1; Programador Junior2 |
| 230 | 1.4.3.4.5.2 | Diseñar las pruebas basandose en los informes | 1d | 2019-02-27 11:18 | 2019-02-28 11:18 | 229 | 712.92d | Programador Junior1; Programador Junior2 |
| 231 | 1.3.3.4.6 | **Diseño de pruebas del módulo de cocinas/barra** | 1.5d | 2019-02-28 11:18 | 2019-03-01 16:18 | 228 | 712.92d |  |
| 232 | 1.4.3.4.6.1 | Redactar informe de los minimos que deben cubrir las pruebas | 0.5d | 2019-02-28 11:18 | 2019-02-28 16:18 |  | 712.92d | Programador Junior1; Programador Junior2 |
| 233 | 1.4.3.4.6.2 | Diseñar las pruebas basandose en los informes | 1d | 2019-02-28 16:18 | 2019-03-01 16:18 | 232 | 712.92d | Programador Junior1; Programador Junior2 |
| 234 | 1.3.4 | **Planificación** | 3d | 2019-03-01 16:18 | 2019-03-06 16:18 | 187 | 712.92d |  |
| 235 | 1.3.4.1 | **Revisión de la planificación** | 2.5d | 2019-03-01 16:18 | 2019-03-06 11:18 |  | 712.92d |  |
| 236 | 1.4.4.1.1 | Revisar que la planificación se ajuste al tiempo adecuado | 1.5d | 2019-03-01 16:18 | 2019-03-05 11:18 |  | 712.92d | Analista-Programador |
| 237 | 1.4.4.1.2 | Revisar que la planificación se ajuste adecuadamente a nuestros recursos | 1d | 2019-03-05 11:18 | 2019-03-06 11:18 | 236 | 712.92d | Analista-Programador |

| ID | WBS | Task | Duration | Start | Finish | Predecessors | Total slack | Resources |
| --- | --- | --- | --- | --- | --- | --- | --- | --- |
| 238 | 1.3.4.2 | **Validación de la planificación** | 0.5d | 2019-03-06 11:18 | 2019-03-06 16:18 | 235 | 712.92d |  |
| 239 | 1.4.4.2.1 | Reunirse con el jefe para validar la planificación revisada, incluye informe semanal | 0.5d | 2019-03-06 11:18 | 2019-03-06 16:18 |  | 712.92d | Analista-Programador; Director de proyecto |
| 240 | 1.4 | **Codificación del sistema** | 16.94d | 2019-03-06 16:18 | 2019-03-29 15:48 | 155 | 712.92d |  |
| 241 | 1.4.1 | **Ambiente de desarrollo** | 6.25d | 2019-03-06 16:18 | 2019-03-15 09:18 |  | 712.92d |  |
| 242 | 1.4.1.1 | **Instalación del entorno de trabajo** | 2d | 2019-03-06 16:18 | 2019-03-08 16:18 |  | 712.92d |  |
| 243 | 1.4.1.1.1 | **Selección de tecnologías** | 0.5d | 2019-03-06 16:18 | 2019-03-07 11:18 |  | 712.92d |  |
| 244 | 1.5.1.1.1.1 | Seleccionar las tecnologías basandose en la fase de análisis | 0.5d | 2019-03-06 16:18 | 2019-03-07 11:18 |  | 712.92d | Analista-Diseñador |
| 245 | 1.4.1.1.2 | **Adquisición de tecnologías** | 0.5d | 2019-03-07 11:18 | 2019-03-07 16:18 | 243 | 712.92d |  |
| 246 | 1.5.1.1.2.1 | Realizar la compra de licencias de software de empresa | 0.5d | 2019-03-07 11:18 | 2019-03-07 16:18 |  | 712.92d | Director de proyecto |
| 247 | 1.5.1.1.2.2 | Comprar el hardware necesario | 0.5d | 2019-03-07 11:18 | 2019-03-07 16:18 |  | 712.92d | Analista-Programador |
| 248 | 1.4.1.1.3 | **Instalación en ordenadores locales** | 1d | 2019-03-07 16:18 | 2019-03-08 16:18 | 245 | 712.92d |  |
| 249 | 1.5.1.1.3.1 | Instalar el software adquirido en los ordenadores locales | 1d | 2019-03-07 16:18 | 2019-03-08 16:18 |  | 712.92d | Analista-Programador |
| 250 | 1.4.1.2 | **Configuración del entorno de trabajo** | 2d | 2019-03-08 16:18 | 2019-03-12 16:18 | 242 | 712.92d |  |
| 251 | 1.4.1.2.1 | **Ajuste de propiedades generales** | 2d | 2019-03-08 16:18 | 2019-03-12 16:18 |  | 712.92d |  |
| 252 | 1.5.1.2.1.1 | Configurar el SO y programas básico de uso general | 2d | 2019-03-08 16:18 | 2019-03-12 16:18 |  | 712.92d | Director de proyecto |
| 253 | 1.4.1.2.2 | **Ajuste de propiedades específicas** | 2d | 2019-03-08 16:18 | 2019-03-12 16:18 |  | 712.92d |  |
| 254 | 1.5.1.2.2.1 | Preparar el software específico en los equipos de personal especializado | 2d | 2019-03-08 16:18 | 2019-03-12 16:18 |  | 712.92d | Programador Junior1; Programador Junior2 |
| 255 | 1.4.1.3 | **Revisiones de eficiencia y velocidad del entorno** | 2.25d | 2019-03-12 16:18 | 2019-03-15 09:18 | 250 | 712.92d |  |
| 256 | 1.4.1.3.1 | **Evaluación de eficiencia y velocidad** | 1d | 2019-03-12 16:18 | 2019-03-13 16:18 |  | 712.92d |  |
| 257 | 1.5.1.3.1.1 | Realizar evaluación de eficiencia y velocidad durante la preparación de los ordenadores | 1d | 2019-03-12 16:18 | 2019-03-13 16:18 |  | 712.92d | Programador Junior1 |
| 258 | 1.4.1.3.2 | **Reconfiguración de tecnologías o herramientas** | 1d | 2019-03-13 16:18 | 2019-03-14 16:18 | 256 | 712.92d |  |
| 259 | 1.5.1.3.2.1 | Ajustar las configuraciones iniciales basándose en las evaluaciones | 1d | 2019-03-13 16:18 | 2019-03-14 16:18 |  | 712.92d | Programador Junior2 |
| 260 | 1.4.1.3.3 | **Selección parcial de otras herramientas** | 0.25d | 2019-03-14 16:18 | 2019-03-15 09:18 | 258 | 712.92d |  |
| 261 | 1.5.1.3.3.1 | Cubrir problemas encontrados con las herramientas de terceros necesarias | 0.25d | 2019-03-14 16:18 | 2019-03-15 09:18 |  | 712.92d | Programador Junior1; Programador Junior2 |

| ID | WBS | Task | Duration | Start | Finish | Predecessors | Total slack | Resources |
| --- | --- | --- | --- | --- | --- | --- | --- | --- |
| 262 | 1.4.2 | **Módulos** | 6.5d | 2019-03-15 09:18 | 2019-03-25 14:18 | 241 | 712.92d |  |
| 263 | 1.4.2.1 | **Módulo del camarero** | 2.5d | 2019-03-15 09:18 | 2019-03-19 14:18 |  | 1112.92d |  |
| 264 | 1.4.2.1.1 | **Almacén de datos de camareros** | 2.5d | 2019-03-15 09:18 | 2019-03-19 14:18 |  | 712.92d |  |
| 265 | 1.5.2.1.1.1 | Preparar la BD y funciones para uso de camareros | 2.5d | 2019-03-15 09:18 | 2019-03-19 14:18 |  | 712.92d | Programador Senior |
| 266 | 1.4.2.1.2 | **Función de comunicar llamadas al camarero** | 1d | 2019-03-15 09:18 | 2019-03-18 09:18 |  | 1262.92d |  |
| 267 | 1.5.2.1.2.1 | Implementar la función de llamadas al camararero mediante la interfaz diseñada | 1d | 2019-03-15 09:18 | 2019-03-18 09:18 |  | 1262.92d | Programador Junior1 |
| 268 | 1.4.2.1.3 | **Función de liberar una mesa ocupada** | 1d | 2019-03-15 09:18 | 2019-03-18 09:18 |  | 1262.92d |  |
| 269 | 1.5.2.1.3.1 | Implementar la función que permite liberar mesas a camareros | 1d | 2019-03-15 09:18 | 2019-03-18 09:18 |  | 1262.92d | Programador Junior2 |
| 270 | 1.4.2.1.4 | **Interfaz visual agradable** | 0.5d | 2019-03-15 09:18 | 2019-03-15 14:18 |  | 1312.92d |  |
| 271 | 1.5.2.1.4.1 | Programar la interfaz visual | 0.5d | 2019-03-15 09:18 | 2019-03-15 14:18 |  | 1312.92d | Analista-Diseñador; Analista-Programador |
| 272 | 1.4.2.2 | **Módulo de gestión de proveedores** | 3.5d | 2019-03-15 09:18 | 2019-03-20 14:18 |  | 712.92d |  |
| 273 | 1.4.2.2.1 | **Almacén de stock** | 1d | 2019-03-19 14:18 | 2019-03-20 14:18 | 264 | 712.92d |  |
| 274 | 1.5.2.2.1.1 | Programar el gestor de stock y conectarlo a la BD | 1d | 2019-03-19 14:18 | 2019-03-20 14:18 |  | 712.92d | Programador Senior |
| 275 | 1.4.2.2.2 | **Interfaz visual agradable** | 0.5d | 2019-03-15 09:18 | 2019-03-15 14:18 |  | 1012.92d |  |
| 276 | 1.5.2.2.2.1 | Programar la interfaz visual | 0.5d | 2019-03-15 09:18 | 2019-03-15 14:18 |  | 1012.92d | Analista-Diseñador; Analista-Programador |
| 277 | 1.4.2.3 | **Módulo de cocinas/barra** | 2.25d | 2019-03-15 09:18 | 2019-03-19 11:18 |  | 837.92d |  |
| 278 | 1.4.2.3.1 | **Función de cobrar con tarjeta u otros métodos** | 2d | 2019-03-15 09:18 | 2019-03-19 09:18 |  | 862.92d |  |
| 279 | 1.5.2.3.1.1 | Programar funciones de cobro | 1.5d | 2019-03-15 09:18 | 2019-03-18 14:18 |  | 862.92d | Programador Junior1 |
| 280 | 1.5.2.3.1.2 | Adaptar funciones de cobro a todos los métodos de pago | 0.5d | 2019-03-18 14:18 | 2019-03-19 09:18 | 279 | 862.92d | Programador Junior1 |
| 281 | 1.4.2.3.2 | **Función de proteger los datos de las transacciones** | 1.5d | 2019-03-15 09:18 | 2019-03-18 14:18 |  | 912.92d |  |
| 282 | 1.5.2.3.2.1 | Asegurarse de que se guardan apropiadamente los datos | 0.5d | 2019-03-15 09:18 | 2019-03-15 14:18 |  | 912.92d | Programador Junior2 |
| 283 | 1.5.2.3.2.2 | Proteger mediante encriptación o restricciones de acceso los datos | 1d | 2019-03-15 14:18 | 2019-03-18 14:18 | 282 | 912.92d | Programador Junior2 |
| 284 | 1.4.2.3.3 | **Almacén de datos de comandas** | 2d | 2019-03-15 09:18 | 2019-03-19 09:18 |  | 837.92d |  |
| 285 | 1.5.2.3.3.1 | Programar el almacen de datos de pedidos | 2d | 2019-03-15 09:18 | 2019-03-19 09:18 |  | 837.92d | Programador Junior1; Programador Junior2 |

| ID | WBS | Task | Duration | Start | Finish | Predecessors | Total slack | Resources |
| --- | --- | --- | --- | --- | --- | --- | --- | --- |
| 286 | 1.4.2.3.4 | **Almacén de datos de mesas** | 0.25d | 2019-03-19 09:18 | 2019-03-19 11:18 | 284 | 837.92d |  |
| 287 | 1.5.2.3.4.1 | Adaptar el almacén de datos de pedidos a las mesas | 0.25d | 2019-03-19 09:18 | 2019-03-19 11:18 | 285 | 837.92d | Programador Junior1; Programador Junior2 |
| 288 | 1.4.2.4 | **Módulo para muestra de datos y comandas** | 3d | 2019-03-20 14:18 | 2019-03-25 14:18 | 272, 277 | 712.92d |  |
| 289 | 1.4.2.4.1 | **Función de seleccionar productos y pedidos** | 2d | 2019-03-20 14:18 | 2019-03-22 14:18 |  | 712.92d |  |
| 290 | 1.5.2.4.1.1 | Implementar navegación de menú | 2d | 2019-03-20 14:18 | 2019-03-22 14:18 |  | 712.92d | Programador Senior |
| 291 | 1.4.2.4.2 | **Función de plasmar información del pedido** | 1d | 2019-03-20 14:18 | 2019-03-21 14:18 |  | 762.92d |  |
| 292 | 1.5.2.4.2.1 | Implementar función de información de pedido | 1d | 2019-03-20 14:18 | 2019-03-21 14:18 |  | 762.92d | Programador Junior1 |
| 293 | 1.4.2.4.3 | **Función de enviar la comanda** | 1d | 2019-03-20 14:18 | 2019-03-21 14:18 |  | 887.92d |  |
| 294 | 1.5.2.4.3.1 | Imlementar función de envio de comanda | 1d | 2019-03-20 14:18 | 2019-03-21 14:18 |  | 887.92d | Programador Junior2 |
| 295 | 1.4.2.4.4 | **Función de reservar mesa libre** | 1d | 2019-03-20 14:18 | 2019-03-21 14:18 |  | 912.92d |  |
| 296 | 1.5.2.4.4.1 | Implementar función de reserva | 1d | 2019-03-20 14:18 | 2019-03-21 14:18 |  | 912.92d | Analista-Programador |
| 297 | 1.4.2.4.5 | **Función de ver estado de la mesa** | 1d | 2019-03-22 14:18 | 2019-03-25 14:18 |  | 712.92d |  |
| 298 | 1.5.2.4.5.1 | Implementar función de estado | 1d | 2019-03-22 14:18 | 2019-03-25 14:18 | 290 | 712.92d | Programador Senior |
| 299 | 1.4.2.4.6 | **Función de informar al cliente** | 1.5d | 2019-03-21 14:18 | 2019-03-25 09:18 |  | 762.92d |  |
| 300 | 1.5.2.4.6.1 | Adaptar función de comunicación para el cliente | 1.5d | 2019-03-21 14:18 | 2019-03-25 09:18 | 292 | 762.92d | Programador Junior1 |
| 301 | 1.4.2.4.7 | **Función de códigos QR** | 0.25d | 2019-03-21 14:18 | 2019-03-21 16:18 |  | 887.92d |  |
| 302 | 1.5.2.4.7.1 | Adaptar el lector QR a nuestros programas | 0.25d | 2019-03-21 14:18 | 2019-03-21 16:18 | 294 | 887.92d | Programador Junior2 |
| 303 | 1.4.2.4.8 | **Interfaz visual agradable** | 0.25d | 2019-03-20 14:18 | 2019-03-20 16:18 |  | 987.92d |  |
| 304 | 1.5.2.4.8.1 | Programar la interfaz visual | 0.25d | 2019-03-20 14:18 | 2019-03-20 16:18 |  | 987.92d | Analista-Diseñador; Analista-Programador |
| 305 | 1.4.2.5 | **Módulo de entretenimiento** | 2d | 2019-03-15 09:18 | 2019-03-19 09:18 |  | 1062.92d |  |
| 306 | 1.4.2.5.1 | **Función de ofrecer entretenimiento al cliente** | 0.12d | 2019-03-15 09:18 | 2019-03-15 10:18 |  | 1100.42d |  |
| 307 | 1.5.2.5.1.1 | Asegurar que los programas adecuados están instalados y son accesibles | 0.12d | 2019-03-15 09:18 | 2019-03-15 10:18 |  | 1100.42d | Programador Junior1 |
| 308 | 1.4.2.5.2 | **Función de interactuar con el local** | 2d | 2019-03-15 09:18 | 2019-03-19 09:18 |  | 1062.92d |  |
| 309 | 1.5.2.5.2.1 | Preparar conexiones visuales de camaras | 0.5d | 2019-03-15 10:18 | 2019-03-15 15:18 | 307 | 1100.42d | Programador Junior1 |
| 310 | 1.5.2.5.2.2 | Preparar lista de música | 0.06d | 2019-03-15 09:18 | 2019-03-15 09:48 |  | 1156.67d | Programador Junior2 |
| 311 | 1.5.2.5.2.3 | Preparar programa de control de interacción | 1d | 2019-03-15 09:18 | 2019-03-18 09:18 |  | 1062.92d | Analista-Programador |
| 312 | 1.5.2.5.2.4 | Completar programa de control de interacción con los módulos | 1d | 2019-03-18 09:18 | 2019-03-19 09:18 | 311, 310, 309 | 1062.92d | Programador Senior |

| ID | WBS | Task | Duration | Start | Finish | Predecessors | Total slack | Resources |
| --- | --- | --- | --- | --- | --- | --- | --- | --- |
| 313 | 1.4.2.5.3 | **Interfaz visual agradable** | 0.5d | 2019-03-15 09:18 | 2019-03-15 14:18 |  | 1212.92d |  |
| 314 | 1.5.2.5.3.1 | Programar interfaz visual | 0.5d | 2019-03-15 09:18 | 2019-03-15 14:18 |  | 1212.92d | Analista-Diseñador; Analista-Programador |
| 315 | 1.4.2.6 | **Módulo de monitorización general y gerencia** | 1d | 2019-03-19 09:18 | 2019-03-20 09:18 | 305 | 1062.92d |  |
| 316 | 1.4.2.6.1 | **Almacén de datos legales** | 1d | 2019-03-19 09:18 | 2019-03-20 09:18 |  | 1062.92d |  |
| 317 | 1.5.2.6.1.1 | Preparar BD y gestión de BD | 1d | 2019-03-19 09:18 | 2019-03-20 09:18 |  | 1062.92d | Programador Junior1 |
| 318 | 1.5.2.6.1.2 | Revisar cumplimiento de requerimientos legales de la BD | 0.25d | 2019-03-19 09:18 | 2019-03-19 11:18 |  | 1137.92d | Programador Senior |
| 319 | 1.4.2.6.2 | **Almacén de nóminas** | 1d | 2019-03-19 09:18 | 2019-03-20 09:18 |  | 1062.92d |  |
| 320 | 1.5.2.6.2.1 | Preparar BD y gestión de BD para nóminas | 1d | 2019-03-19 09:18 | 2019-03-20 09:18 |  | 1062.92d | Programador Junior2 |
| 321 | 1.5.2.6.2.2 | Automatizar las nóminas y su almacenamiento de datos | 1d | 2019-03-19 09:18 | 2019-03-20 09:18 |  | 1062.92d | Analista-Programador |
| 322 | 1.4.2.6.3 | **Interfaz visual agrdable** | 0.5d | 2019-03-19 09:18 | 2019-03-19 14:18 |  | 1112.92d |  |
| 323 | 1.5.2.6.3.1 | Programar la interfaz visual | 0.5d | 2019-03-19 09:18 | 2019-03-19 14:18 |  | 1112.92d | Analista-Diseñador; Analista-Programador |
| 324 | 1.4.3 | **Depuración** | 4.19d | 2019-03-25 14:18 | 2019-03-29 15:48 | 262 | 712.92d |  |
| 325 | 1.4.3.1 | **Localización de defectos** | 0.69d | 2019-03-25 14:18 | 2019-03-26 10:48 |  | 712.92d |  |
| 326 | 1.4.3.1.1 | **Listado de defectos** | 0.5d | 2019-03-25 14:18 | 2019-03-26 09:18 |  | 712.92d |  |
| 327 | 1.5.3.1.1.1 | Realizar un listado intensivo de defectos encontrados en la codificación | 0.5d | 2019-03-25 14:18 | 2019-03-26 09:18 |  | 712.92d | Programador Senior |
| 328 | 1.4.3.1.2 | **Ubicación de defectos** | 0.19d | 2019-03-26 09:18 | 2019-03-26 10:48 | 326 | 712.92d |  |
| 329 | 1.5.3.1.2.1 | Completar listado con posiciones exactas (linea, programa, módulo, etc) de los errores | 0.06d | 2019-03-26 09:18 | 2019-03-26 09:48 |  | 712.92d | Programador Senior |
| 330 | 1.5.3.1.2.2 | Incluir en listado posibles relaciones del error con otro módulo o trozo de código | 0.12d | 2019-03-26 09:48 | 2019-03-26 10:48 | 329 | 712.92d | Programador Senior |
| 331 | 1.4.3.2 | **Corrección de defectos** | 3.5d | 2019-03-26 10:48 | 2019-03-29 15:48 | 325 | 712.92d |  |
| 332 | 1.4.3.2.1 | **Modificaciones necesarias** | 2.5d | 2019-03-26 10:48 | 2019-03-28 15:48 |  | 712.92d |  |
| 333 | 1.5.3.2.1.1 | Implementar las modificaciones y arreglos de la codificación | 2.5d | 2019-03-26 10:48 | 2019-03-28 15:48 |  | 712.92d | Analista-Programador; Programador Junior1; Programador Junior2; Programador Senior |
| 334 | 1.4.3.2.2 | **Revisión de corrección del defecto** | 1d | 2019-03-28 15:48 | 2019-03-29 15:48 | 332 | 712.92d |  |
| 335 | 1.5.3.2.2.1 | Revisar todos los errores del listado para comprobar que han sido arreglados correctamente | 1d | 2019-03-28 15:48 | 2019-03-29 15:48 |  | 712.92d | Programador Senior |
| 336 | 1.5 | **Pruebas del sistema y sus componentes** | 15.02d | 2019-03-29 15:48 | 2019-04-19 15:58 | 240 | 712.92d |  |
| 337 | 1.5.1 | **Planificación de pruebas** | 2.5d | 2019-03-29 15:48 | 2019-04-03 10:48 |  | 712.92d |  |
| 338 | 1.5.1.1 | **Pruebas de aceptación** | 0.5d | 2019-03-29 15:48 | 2019-04-01 10:48 |  | 712.92d |  |
| 339 | 1.5.1.1.1 | **Pruebas para los gerentes de local** | 0.5d | 2019-03-29 15:48 | 2019-04-01 10:48 |  | 712.92d |  |
| 340 | 1.6.1.1.1.1 | Planear las pruebas basándose en su diseño | 0.5d | 2019-03-29 15:48 | 2019-04-01 10:48 |  | 712.92d | Programador Junior1 |

| ID | WBS | Task | Duration | Start | Finish | Predecessors | Total slack | Resources |
| --- | --- | --- | --- | --- | --- | --- | --- | --- |
| 341 | 1.5.1.1.2 | **Pruebas sobre el personal de local** | 0.5d | 2019-03-29 15:48 | 2019-04-01 10:48 |  | 712.92d |  |
| 342 | 1.6.1.1.2.1 | Planear las pruebas basándose en su diseño | 0.5d | 2019-03-29 15:48 | 2019-04-01 10:48 |  | 712.92d | Programador Junior2 |
| 343 | 1.5.1.1.3 | **Pruebas sobre los usuarios del local** | 0.5d | 2019-03-29 15:48 | 2019-04-01 10:48 |  | 712.92d |  |
| 344 | 1.6.1.1.3.1 | Planear las pruebas basándose en su diseño | 0.5d | 2019-03-29 15:48 | 2019-04-01 10:48 |  | 712.92d | Programador Senior |
| 345 | 1.5.1.1.4 | **Pruebas para los proveedores** | 0.5d | 2019-03-29 15:48 | 2019-04-01 10:48 |  | 712.92d |  |
| 346 | 1.6.1.1.4.1 | Planear las pruebas basándose en su diseño | 0.5d | 2019-03-29 15:48 | 2019-04-01 10:48 |  | 712.92d | Analista-Diseñador |
| 347 | 1.5.1.2 | **Pruebas del sistema** | 0.5d | 2019-04-01 10:48 | 2019-04-01 15:48 | 338 | 712.92d |  |
| 348 | 1.5.1.2.1 | **Pruebas para comunicación con PayPal** | 0.5d | 2019-04-01 10:48 | 2019-04-01 15:48 |  | 712.92d |  |
| 349 | 1.6.1.2.1.1 | Planear las pruebas basándose en su diseño | 0.5d | 2019-04-01 10:48 | 2019-04-01 15:48 |  | 712.92d | Programador Junior1 |
| 350 | 1.5.1.2.2 | **Pruebas para comunicación con terminales TPV** | 0.5d | 2019-04-01 10:48 | 2019-04-01 15:48 |  | 712.92d |  |
| 351 | 1.6.1.2.2.1 | Planear las pruebas basándose en su diseño | 0.5d | 2019-04-01 10:48 | 2019-04-01 15:48 |  | 712.92d | Programador Junior2 |
| 352 | 1.5.1.2.3 | **Pruebas para comunicación con tablets de local** | 0.5d | 2019-04-01 10:48 | 2019-04-01 15:48 |  | 712.92d |  |
| 353 | 1.6.1.2.3.1 | Planear las pruebas basándose en su diseño | 0.5d | 2019-04-01 10:48 | 2019-04-01 15:48 |  | 712.92d | Programador Senior |
| 354 | 1.5.1.3 | **Pruebas de integración** | 0.5d | 2019-04-01 15:48 | 2019-04-02 10:48 | 347 | 712.92d |  |
| 355 | 1.5.1.3.1 | **Pruebas para comunicación entre módulos** | 0.5d | 2019-04-01 15:48 | 2019-04-02 10:48 |  | 712.92d |  |
| 356 | 1.6.1.3.1.1 | Planear las pruebas basándose en su diseño | 0.5d | 2019-04-01 15:48 | 2019-04-02 10:48 |  | 712.92d | Programador Senior |
| 357 | 1.5.1.4 | **Pruebas de unidad** | 1d | 2019-04-02 10:48 | 2019-04-03 10:48 | 354 | 712.92d |  |
| 358 | 1.5.1.4.1 | **Pruebas de módulo de monitorización general del sistema** | 0.5d | 2019-04-02 10:48 | 2019-04-02 15:48 |  | 712.92d |  |
| 359 | 1.6.1.4.1.1 | Planear las pruebas basándose en su diseño | 0.5d | 2019-04-02 10:48 | 2019-04-02 15:48 |  | 712.92d | Programador Junior1 |
| 360 | 1.5.1.4.2 | **Pruebas de módulo de entretenimiento** | 0.5d | 2019-04-02 10:48 | 2019-04-02 15:48 |  | 712.92d |  |
| 361 | 1.6.1.4.2.1 | Planear las pruebas basándose en su diseño | 0.5d | 2019-04-02 10:48 | 2019-04-02 15:48 |  | 712.92d | Programador Junior2 |
| 362 | 1.5.1.4.3 | **Pruebas de módulo para muestra de datos y comandas** | 0.5d | 2019-04-02 10:48 | 2019-04-02 15:48 |  | 712.92d |  |
| 363 | 1.6.1.4.3.1 | Planear las pruebas basándose en su diseño | 0.5d | 2019-04-02 10:48 | 2019-04-02 15:48 |  | 712.92d | Programador Senior |
| 364 | 1.5.1.4.4 | **Pruebas de módulo de gestión de proveedores** | 0.5d | 2019-04-02 15:48 | 2019-04-03 10:48 | 358 | 712.92d |  |
| 365 | 1.6.1.4.4.1 | Planear las pruebas basándose en su diseño | 0.5d | 2019-04-02 15:48 | 2019-04-03 10:48 |  | 712.92d | Programador Junior1 |

| ID | WBS | Task | Duration | Start | Finish | Predecessors | Total slack | Resources |
| --- | --- | --- | --- | --- | --- | --- | --- | --- |
| 366 | 1.5.1.4.5 | **Pruebas de módulo del camarero** | 0.5d | 2019-04-02 15:48 | 2019-04-03 10:48 | 360 | 712.92d |  |
| 367 | 1.6.1.4.5.1 | Planear las pruebas basándose en su diseño | 0.5d | 2019-04-02 15:48 | 2019-04-03 10:48 |  | 712.92d | Programador Junior2 |
| 368 | 1.5.1.4.6 | **Pruebas del módulo de cocinas/barra** | 0.5d | 2019-04-02 15:48 | 2019-04-03 10:48 | 362 | 712.92d |  |
| 369 | 1.6.1.4.6.1 | Planear las pruebas basándose en su diseño | 0.5d | 2019-04-02 15:48 | 2019-04-03 10:48 |  | 712.92d | Programador Senior |
| 370 | 1.5.2 | **Ejecución de pruebas** | 10d | 2019-04-03 10:48 | 2019-04-17 10:48 | 337 | 712.92d |  |
| 371 | 1.5.2.1 | **Ejecución de casos de prueba** | 3d | 2019-04-03 10:48 | 2019-04-08 10:48 |  | 712.92d |  |
| 372 | 1.5.2.1.1 | **Ejecución de conjunto de casos de unidad** | 2d | 2019-04-03 10:48 | 2019-04-05 10:48 |  | 812.92d |  |
| 373 | 1.6.2.1.1.1 | Dividir los equipos para ejecutar las pruebas de cada unidad | 0.5d | 2019-04-03 10:48 | 2019-04-03 15:48 |  | 712.92d | Programador Senior |
| 374 | 1.6.2.1.1.2 | Ejecutar las pruebas de cada módulo individual | 2d | 2019-04-03 10:48 | 2019-04-05 10:48 |  | 812.92d | Analista-Programador |
| 375 | 1.5.2.1.2 | **Ejecución de conjunto de casos de integración** | 2.5d | 2019-04-03 10:48 | 2019-04-05 15:48 |  | 762.92d |  |
| 376 | 1.6.2.1.2.1 | Ejecutar las pruebas para comprobar que la integración de módulos no tiene fallos | 2.5d | 2019-04-03 10:48 | 2019-04-05 15:48 |  | 762.92d | Programador Junior1 |
| 377 | 1.5.2.1.3 | **Ejecución de conjunto de casos de sistema** | 2.5d | 2019-04-03 10:48 | 2019-04-05 15:48 |  | 762.92d |  |
| 378 | 1.6.2.1.3.1 | Ejecutar las pruebas de sistema | 2.5d | 2019-04-03 10:48 | 2019-04-05 15:48 |  | 762.92d | Programador Junior2 |
| 379 | 1.5.2.1.4 | **Ejecución de conjunto de casos de validación** | 2.5d | 2019-04-03 15:48 | 2019-04-08 10:48 |  | 712.92d |  |
| 380 | 1.6.2.1.4.1 | Ejecutar las pruebas de validación del programa | 2.5d | 2019-04-03 15:48 | 2019-04-08 10:48 | 373 | 712.92d | Programador Senior |
| 381 | 1.5.2.2 | **Listado de errores** | 2.5d | 2019-04-08 10:48 | 2019-04-10 15:48 | 371 | 712.92d |  |
| 382 | 1.5.2.2.1 | **Enumeración de errores graves** | 2d | 2019-04-08 10:48 | 2019-04-10 10:48 |  | 712.92d |  |
| 383 | 1.6.2.2.1.1 | Crear un listado con los errores que se consideran más graves | 0.5d | 2019-04-08 10:48 | 2019-04-08 15:48 |  | 712.92d | Analista-Programador |
| 384 | 1.6.2.2.1.2 | Analizar cuales de los errores son tan graves como se estima y cuales pueden desestimarse | 1.5d | 2019-04-08 15:48 | 2019-04-10 10:48 | 383 | 712.92d | Analista-Programador |
| 385 | 1.5.2.2.2 | **Desestimación de errores leves o de otro tipo** | 0.5d | 2019-04-10 10:48 | 2019-04-10 15:48 |  | 712.92d |  |
| 386 | 1.6.2.2.2.1 | Analizar los errores leves para observar que alguna combinación de estos no cause problemas graves | 0.5d | 2019-04-10 10:48 | 2019-04-10 15:48 | 384 | 712.92d | Programador Senior |
| 387 | 1.5.2.3 | **Corrección de errores** | 2.5d | 2019-04-10 15:48 | 2019-04-15 10:48 | 381 | 712.92d |  |
| 388 | 1.5.2.3.1 | **Depuración de errores** | 2d | 2019-04-10 15:48 | 2019-04-12 15:48 |  | 712.92d |  |
| 389 | 1.6.2.3.1.1 | Arreglar todos los errores graves | 2d | 2019-04-10 15:48 | 2019-04-12 15:48 |  | 712.92d | Programador Senior |
| 390 | 1.6.2.3.1.2 | Arreglar los errores leves que causen errores graves como conjunto | 2d | 2019-04-10 15:48 | 2019-04-12 15:48 |  | 712.92d | Programador Junior1; Programador Junior2 |

| ID | WBS | Task | Duration | Start | Finish | Predecessors | Total slack | Resources |
| --- | --- | --- | --- | --- | --- | --- | --- | --- |
| 391 | 1.5.2.3.2 | **Verificación de corrección** | 0.5d | 2019-04-12 15:48 | 2019-04-15 10:48 | 388 | 712.92d |  |
| 392 | 1.6.2.3.2.1 | Comprobar que las correcciones han sido realizadas sin causar mas errores | 0.5d | 2019-04-12 15:48 | 2019-04-15 10:48 |  | 712.92d | Analista-Programador |
| 393 | 1.5.2.4 | **Verificación de terminación** | 2d | 2019-04-15 10:48 | 2019-04-17 10:48 | 387 | 712.92d |  |
| 394 | 1.5.2.4.1 | **Revisión de listado de errores** | 1.5d | 2019-04-15 10:48 | 2019-04-16 15:48 |  | 712.92d |  |
| 395 | 1.6.2.4.1.1 | Revisar el listado de errores e informe de correcciones | 1.5d | 2019-04-15 10:48 | 2019-04-16 15:48 |  | 712.92d | Analista-Programador |
| 396 | 1.5.2.4.2 | **Aprobación formal de finalización** | 0.5d | 2019-04-16 15:48 | 2019-04-17 10:48 | 394 | 712.92d |  |
| 397 | 1.6.2.4.2.1 | Reunirse con el encargado para formalizar la validación e informar del progreso semanal | 0.5d | 2019-04-16 15:48 | 2019-04-17 10:48 |  | 712.92d | Analista-Programador; Director de proyecto |
| 398 | 1.5.3 | **Análisis de errores y evaluación** | 2.52d | 2019-04-17 10:48 | 2019-04-19 15:58 | 370 | 712.92d |  |
| 399 | 1.5.3.1 | **Creación de documento de errores** | 1d | 2019-04-17 10:48 | 2019-04-18 10:48 |  | 712.92d |  |
| 400 | 1.6.3.1.1 | Redactar documento de errores | 1d | 2019-04-17 10:48 | 2019-04-18 10:48 |  | 712.92d | Analista-Programador |
| 401 | 1.5.3.2 | **Catalogación de errores** | 1d | 2019-04-17 10:48 | 2019-04-18 10:48 |  | 712.92d |  |
| 402 | 1.6.3.2.1 | Catalogar errores basandose en el análisis realizado en la ejecución de pruebas | 1d | 2019-04-17 10:48 | 2019-04-18 10:48 | 385, 382 | 712.92d | Analista-Programador |
| 403 | 1.5.3.3 | **Realización de análisis estadísticos** | 1.5d | 2019-04-18 10:48 | 2019-04-19 15:48 | 401, 399 | 712.92d |  |
| 404 | 1.6.3.3.1 | Realizar análisis estadístico de errores | 1d | 2019-04-18 10:48 | 2019-04-19 10:48 |  | 712.92d | Analista-Diseñador; Analista-Programador |
| 405 | 1.6.3.3.2 | Redactar informe estadístico | 0.5d | 2019-04-19 10:48 | 2019-04-19 15:48 | 404 | 712.92d | Analista-Diseñador; Analista-Programador |
| 406 | 1.5.3.4 | **Adición al archivo de proyectos de la empresa** | 0.02d | 2019-04-19 15:48 | 2019-04-19 15:58 | 403, 401, 399 | 712.92d |  |
| 407 | 1.6.3.4.1 | Añadir los documentos creados al archivo de la empresa | 0.02d | 2019-04-19 15:48 | 2019-04-19 15:58 |  | 712.92d | Director de proyecto |
